# 项目开发计划

Schedule from MS Project, 2018-10-15 to 2018-11-09.

## Calendars

- 标准: Mon-Fri 08:00-12:00, 13:00-17:00; Sat-Sun off.

## Resources

| Resource |
| --- |
| 蔡万伟 |
| BS前端 |

## Schedule

| ID | WBS | Task | Duration | Start | Finish | Total slack | Constraint | Text1 |
| --- | --- | --- | --- | --- | --- | --- | --- | --- |
| 1 | 1 | **后端工作** | 13d? | 2018-10-15 | 2018-10-31 | 7d |  |  |
| 2 | 1.1 | **后台管理网站** | 6d | 2018-10-15 | 2018-10-22 | 14d |  |  |
| 3 | 1.1.1 | **网站功能** | 6d | 2018-10-15 | 2018-10-22 | 14d |  |  |
| 4 | 1.1.1.1 | 发卡功能 | 2d | 2018-10-15 | 2018-10-16 | 18d |  |  |
| 5 | 1.1.1.2 | 区域权限设置 | 2d | 2018-10-17 | 2018-10-18 | 16d | start no earlier than 2018-10-17 |  |
| 6 | 1.1.1.3 | 网页调用3D软件 | 2d | 2018-10-19 | 2018-10-22 | 14d | start no earlier than 2018-10-19 |  |
| 7 | 1.1.2 | **网站优化** | 5d | 2018-10-15 | 2018-10-19 | 15d |  |  |
| 8 | 1.1.2.1 | 页面按需更新 | 2d | 2018-10-15 | 2018-10-16 | 18d |  |  |
| 9 | 1.1.2.2 | **Web定位展示** | 2d | 2018-10-18 | 2018-10-19 | 15d |  |  |
| 10 | 1.1.2.2.1 | 对接3D顶视图接口 | 2d | 2018-10-18 | 2018-10-19 | 15d | start no earlier than 2018-10-18 |  |
| 11 | 1.2 | **定位后台处理** | 8d | 2018-10-19 | 2018-10-30 | 8d |  |  |
| 12 | 1.2.1 | **设置功能** | 2d | 2018-10-19 | 2018-10-22 | 14d |  |  |
| 13 | 1.2.1.1 | 区域权限设置 | 2d | 2018-10-19 | 2018-10-22 | 14d | start no earlier than 2018-10-19 |  |
| 14 | 1.2.2 | **定位数据优化** | 6d | 2018-10-23 | 2018-10-30 | 8d |  |  |
| 15 | 1.2.2.1 | "无用点"过滤 | 3d | 2018-10-23 | 2018-10-25 | 11d | start no earlier than 2018-10-23 |  |
| 16 | 1.2.2.2 | "关键点"提取 | 3d | 2018-10-26 | 2018-10-30 | 8d | start no earlier than 2018-10-26 |  |
| 17 | 1.3 | **数据对接** | 13d? | 2018-10-15 | 2018-10-31 | 7d |  |  |
| 18 | 1.3.1 | **对外接口** | 5d | 2018-10-15 | 2018-10-19 | 15d |  |  |
| 19 | 1.3.1.1 | 操作功能对外接口 | 5d | 2018-10-15 | 2018-10-19 | 15d |  | 基础平台调用测试 |
| 20 | 1.3.1.2 | 定位顶视图接口 | 2d | 2018-10-15 | 2018-10-16 | 18d |  | 基础平台调用测试 |
| 21 | 1.3.2 | **对接模拟** | 5d | 2018-10-15 | 2018-10-19 | 15d |  | 模拟部分，自己处理 |
| 22 | 1.3.2.1 | **拉取信息** | 5d | 2018-10-15 | 2018-10-19 | 15d |  | 模拟部分，自己处理 |
| 23 | 1.3.2.1.1 | **对接数据** | 5d | 2018-10-15 | 2018-10-19 | 15d |  | 模拟部分，自己处理 |
| 24 | 1.3.2.1.1.1 | SIS设备数据 | 5d | 2018-10-15 | 2018-10-19 | 15d |  | 模拟部分，自己处理 |
| 25 | 1.3.2.1.1.2 | 门禁数据记录 | 1d | 2018-10-15 | 2018-10-15 | 19d |  | 模拟部分，自己处理 |
| 26 | 1.3.2.1.1.3 | 摄像头数据 | 1d | 2018-10-15 | 2018-10-15 | 19d |  | 模拟部分，自己处理 |

Notes:
- 18: RestFul
- 19: 发卡、配置权限
- 20: 需要3D发送数据

| ID | WBS | Task | Duration | Start | Finish | Total slack | Constraint | Text1 |
| --- | --- | --- | --- | --- | --- | --- | --- | --- |
| 27 | 1.3.2.1.2 | **同步数据** | 5d | 2018-10-15 | 2018-10-19 | 15d |  | 模拟部分，自己处理 |
| 28 | 1.3.2.1.2.1 | 人员&组织架构 | 5d | 2018-10-15 | 2018-10-19 | 15d |  | 模拟部分，自己处理 |
| 29 | 1.3.2.1.2.2 | 区域&设备 | 5d | 2018-10-15 | 2018-10-19 | 15d |  | 模拟部分，自己处理 |
| 30 | 1.3.2.2 | **被操作信息** | 1d | 2018-10-15 | 2018-10-15 | 19d |  | 模拟部分，自己处理 |
| 31 | 1.3.2.2.1 | 设置功能对外接口 | 1d | 2018-10-15 | 2018-10-15 | 19d |  | 模拟部分，自己处理 |
| 32 | 1.3.3 | **对接联调** | 13d? | 2018-10-15 | 2018-10-31 | 7d |  | 基础平台配置对接 |
| 33 | 1.3.3.1 | **推送信息** | 5d | 2018-10-15 | 2018-10-19 | 15d |  | 基础平台配置对接 |
| 34 | 1.3.3.1.1 | 消息队列接口 | 5d | 2018-10-15 | 2018-10-19 | 15d |  | 基础平台配置对接 |
| 35 | 1.3.3.1.2 | 告警推送 | 5d | 2018-10-15 | 2018-10-19 | 15d |  | 基础平台配置对接 |
| 36 | 1.3.3.1.3 | 门禁状态推送 | 5d | 2018-10-15 | 2018-10-19 | 15d |  | 基础平台配置对接 |
| 37 | 1.3.3.2 | **拉取信息** | 10d | 2018-10-15 | 2018-10-26 | 10d |  | 基础平台配置对接 |
| 38 | 1.3.3.2.1 | **同步数据** | 5d | 2018-10-15 | 2018-10-19 | 15d |  | 基础平台配置对接 |
| 39 | 1.3.3.2.1.1 | 人员&组织架构 | 5d | 2018-10-15 | 2018-10-19 | 15d |  | 基础平台配置对接 |
| 40 | 1.3.3.2.1.2 | 区域&设备 | 5d | 2018-10-15 | 2018-10-19 | 15d |  | 基础平台配置对接 |
| 41 | 1.3.3.2.2 | **对接数据** | 10d | 2018-10-15 | 2018-10-26 | 10d |  | 基础平台配置对接 |
| 42 | 1.3.3.2.2.1 | 两票数据 | 5d | 2018-10-22 | 2018-10-26 | 10d | start no earlier than 2018-10-22 | 基础平台配置对接 |
| 43 | 1.3.3.2.2.2 | 巡检数据 | 5d | 2018-10-22 | 2018-10-26 | 10d | start no earlier than 2018-10-22 | 基础平台配置对接 |
| 44 | 1.3.3.2.2.3 | SIS设备数据 | 5d | 2018-10-22 | 2018-10-26 | 10d | start no earlier than 2018-10-22 | 基础平台配置对接 |
| 45 | 1.3.3.2.2.4 | 设备告警列表 | 5d | 2018-10-15 | 2018-10-19 | 15d |  | 基础平台配置对接 |
| 46 | 1.3.3.2.2.5 | 门禁数据记录 | 5d | 2018-10-15 | 2018-10-19 | 15d |  | 基础平台配置对接 |
| 47 | 1.3.3.2.2.6 | 摄像头数据 | 5d | 2018-10-22 | 2018-10-26 | 10d | start no earlier than 2018-10-22 | 基础平台配置对接 |
| 48 | 1.3.3.3 | **被操作信息** | 1d? | 2018-10-15 | 2018-10-15 | 19d |  | 基础平台配置对接 |
| 49 | 1.3.3.3.1 | 设置功能对外接口 | 1d? | 2018-10-15 | 2018-10-15 | 19d |  | 基础平台配置对接 |
| 50 | 1.3.3.4 | **定位实时数据联调** | 8d | 2018-10-22 | 2018-10-31 | 7d |  | 基础平台配置对接 |
| 51 | 1.3.3.4.1 | 基站设置 | 3d | 2018-10-22 | 2018-10-24 | 12d | start no earlier than 2018-10-22 | 基础平台配置对接 |
| 52 | 1.3.3.4.2 | 数据录入 | 3d | 2018-10-22 | 2018-10-24 | 12d | start no earlier than 2018-10-22 | 基础平台配置对接 |
| 53 | 1.3.3.4.3 | 定位联调 | 5d | 2018-10-25 | 2018-10-31 | 7d | start no earlier than 2018-10-25 | 基础平台配置对接 |

| ID | WBS | Task | Duration | Start | Finish | Total slack | Constraint | Text1 |
| --- | --- | --- | --- | --- | --- | --- | --- | --- |
| 54 | 2 | **前端(3D)工作** | 20d | 2018-10-15 | 2018-11-09 | 0d |  |  |
| 55 | 2.1 | **模型展示** | 10d | 2018-10-15 | 2018-10-26 | 10d |  |  |
| 56 | 2.1.1 | **建模** | 10d | 2018-10-15 | 2018-10-26 | 10d |  |  |
| 57 | 2.1.1.1 | 生产设备可动部件动画 | 5d | 2018-10-22 | 2018-10-26 | 10d | start no earlier than 2018-10-22 |  |
| 58 | 2.1.1.2 | 模型调整 | 10d | 2018-10-15 | 2018-10-26 | 10d |  |  |
| 59 | 2.1.1.3 | 地形中的机房分离出来 | 5d | 2018-10-22 | 2018-10-26 | 10d | start no earlier than 2018-10-22 |  |
| 60 | 2.1.1.4 | 生产设备 | 5d | 2018-10-22 | 2018-10-26 | 10d | start no earlier than 2018-10-22 |  |
| 61 | 2.1.2 | **加入模型** | 5d | 2018-10-15 | 2018-10-19 | 15d |  |  |
| 62 | 2.1.2.1 | 其他次要设备 | 5d | 2018-10-15 | 2018-10-19 | 15d |  |  |
| 63 | 2.2 | **定位优化** | 15d | 2018-10-15 | 2018-11-02 | 5d |  |  |
| 64 | 2.2.1 | **大量人员数据测试以及优化** | 5d | 2018-10-15 | 2018-10-19 | 15d |  |  |
| 65 | 2.2.1.1 | 前端展示大量人员 | 5d | 2018-10-15 | 2018-10-19 | 15d |  |  |
| 66 | 2.2.1.2 | 历史数据大数据量测试 | 5d | 2018-10-15 | 2018-10-19 | 15d |  |  |
| 67 | 2.2.1.3 | 多人轨迹测试并优化 | 5d | 2018-10-15 | 2018-10-19 | 15d |  |  |
| 68 | 2.2.2 | **定位展示效果优化** | 15d | 2018-10-15 | 2018-11-02 | 5d |  |  |
| 69 | 2.2.2.1 | 人员状态效果展示 | 3d | 2018-10-15 | 2018-10-17 | 17d |  |  |
| 70 | 2.2.2.2 | 男女人物模型 | 2d | 2018-10-15 | 2018-10-16 | 18d |  |  |
| 71 | 2.2.2.3 | **轨迹效果优化** | 8d | 2018-10-15 | 2018-10-24 | 12d |  |  |
| 72 | 2.2.2.3.1 | 进出有效区域 | 3d | 2018-10-15 | 2018-10-17 | 17d |  |  |
| 73 | 2.2.2.3.2 | 楼层间轨迹 | 3d | 2018-10-17 | 2018-10-19 | 15d | start no earlier than 2018-10-17 |  |
| 74 | 2.2.2.3.3 | 进出建筑轨迹 | 3d | 2018-10-22 | 2018-10-24 | 12d | start no earlier than 2018-10-22 |  |
| 75 | 2.2.2.4 | 区域效果优化 | 1d | 2018-10-22 | 2018-10-22 | 14d | start no earlier than 2018-10-22 |  |
| 76 | 2.2.2.5 | 位置穿墙问题处理 | 5d | 2018-10-29 | 2018-11-02 | 5d | start no earlier than 2018-10-29 |  |
| 77 | 2.3 | **设备** | 10d | 2018-10-15 | 2018-10-26 | 10d |  |  |
| 78 | 2.3.1 | **设备数据录入** | 10d | 2018-10-15 | 2018-10-26 | 10d |  | 需要施工人员提供设备信息 |
| 79 | 2.3.1.1 | 门禁设备 | 5d | 2018-10-15 | 2018-10-19 | 15d |  | 需要施工人员提供设备信息 |
| 80 | 2.3.1.2 | 摄像头设备 | 5d | 2018-10-15 | 2018-10-19 | 15d |  | 需要施工人员提供设备信息 |
| 81 | 2.3.1.3 | 消防 | 5d | 2018-10-22 | 2018-10-26 | 10d | start no earlier than 2018-10-22 | 需要施工人员提供设备信息 |
| 82 | 2.3.1.4 | 周界报警 | 5d | 2018-10-22 | 2018-10-26 | 10d | start no earlier than 2018-10-22 | 需要施工人员提供设备信息 |
| 83 | 2.3.1.5 | 装饰品设备 | 5d | 2018-10-22 | 2018-10-26 | 10d | start no earlier than 2018-10-22 | 先简单录入一些，后续根据客户反馈 |
| 84 | 2.3.1.6 | KKS设备信息录入 | 3d | 2018-10-15 | 2018-10-17 | 17d |  | 先简单录入一些，后续根据客户反馈 |
| 85 | 2.3.2 | 大设备独立展示 | 3d | 2018-10-22 | 2018-10-24 | 12d | start no earlier than 2018-10-22 |  |
| 86 | 2.3.3 | 大数据量设备展示优化 | 5d | 2018-10-15 | 2018-10-19 | 15d |  |  |

Notes:
- 57: 发电机、燃气机 运作效果动画
- 58: 尺寸、配色
- 60: 用户联调SIS数据用的有代表性的几个设备
- 65: （需要优化）
- 66: 查询速度测试并优化
- 69: 在线，休眠，离线。在线（在有效区域活动）、休眠（在有效区域停止）、离线（离开有效区域）
- 84: 并摆放在3D位置中

| ID | WBS | Task | Duration | Start | Finish | Total slack | Constraint | Text1 |
| --- | --- | --- | --- | --- | --- | --- | --- | --- |
| 87 | 2.4 | **对接展示** | 10d | 2018-10-29 | 2018-11-09 | 0d |  |  |
| 88 | 2.4.1 | **动环设备** | 6d | 2018-10-29 | 2018-11-05 | 4d |  | 需要基础平台配合 |
| 89 | 2.4.1.1 | 设备告警 | 2d | 2018-10-29 | 2018-10-30 | 8d | start no earlier than 2018-10-29 | 需要基础平台配合 |
| 90 | 2.4.1.2 | 设备区域报警 | 2d | 2018-10-31 | 2018-11-01 | 6d | start no earlier than 2018-10-31 | 需要基础平台配合 |
| 91 | 2.4.1.3 | 摄像头 | 4d | 2018-10-31 | 2018-11-05 | 4d | start no earlier than 2018-10-31 | 需要基础平台配合 |
| 92 | 2.4.2 | SIS设备 | 3d | 2018-10-29 | 2018-10-31 | 7d | start no earlier than 2018-10-29 | 需要基础平台配合 |
| 93 | 2.4.3 | 两票展示功能 | 10d | 2018-10-29 | 2018-11-09 | 0d | start no earlier than 2018-10-29 | 等待相关方提供接口 |
| 94 | 2.4.4 | 巡检展示功能 | 10d | 2018-10-29 | 2018-11-09 | 0d | start no earlier than 2018-10-29 | 等待相关方提供接口 |
| 95 | 2.5 | **其他** | 3d | 2018-11-05 | 2018-11-07 | 2d |  |  |
| 96 | 2.5.1 | **漫游** | 3d | 2018-11-05 | 2018-11-07 | 2d |  |  |
| 97 | 2.5.1.1 | 人物走动动画切换 | 3d | 2018-11-05 | 2018-11-07 | 2d | start no earlier than 2018-11-05 |  |

Notes:
- 90: 消防、周界
- 91: 视频
- 93: 工作票、操作票的内容可能不同
